# TimelineXpress_Overall_Schedule

How a schedule from ProjectLibre changed from version to version. A marks actual dates.

## Version 1 (saved 2025-02-15)

Note of the change: Add files to repository - for TimelineXpress project plan

| ID | WBS | Task | Duration | Start | Finish | Predecessors | Constraint |
| --- | --- | --- | --- | --- | --- | --- | --- |
| 1 | 1 | **Phase 1: Identify Problem, Obtain Approval** | 5d | 2025-01-30 | 2025-02-06 |  | start no earlier than 2025-01-30 |
| 2 |  | Creat Project Proposal Slides | 5d | 2025-01-30 | 2025-02-06 |  |  |
| 3 |  | PROJECT PROPOSAL DUE | 0d | 2025-02-06 | 2025-02-06 | 2 |  |
| 4 | 2 | **Phase 2: Plan and Monitor** | 10d | 2025-02-06 | 2025-02-20 | 1 |  |
| 5 |  | Write Project Plan document | 8d | 2025-02-06 | 2025-02-18 |  |  |
| 6 |  | Create System Context Diag | 2d | 2025-02-06 | 2025-02-10 | 5SS |  |
| 7 |  | Create Main Schedule | 4d | 2025-02-10 | 2025-02-14 | 6 |  |
| 8 |  | PROJECT PLAN DOCUMENT DUE | 0d | 2025-02-20 | 2025-02-20 | 5 | start no earlier than 2025-02-20 |
| 9 | 3 | **Phase 3: Analysis & Discovery** | 4d | 2025-02-20 | 2025-02-26 | 4 |  |
| 10 |  | Analyze Database needs | 4d | 2025-02-20 | 2025-02-26 |  |  |
| 11 |  | Analyze Graphics needs | 4d | 2025-02-20 | 2025-02-26 | 10SS |  |
| 12 | 4 | **Iteration 1: Develop Database** | 15d | 2025-02-26 | 2025-03-19 | 9 |  |
| 13 |  | Planning Tasks | 1d | 2025-02-26 | 2025-02-27 |  |  |
| 14 |  | Analysis Tasks | 5d | 2025-02-26 | 2025-03-05 |  |  |
| 15 |  | Design Tasks | 5d | 2025-03-05 | 2025-03-12 | 14 |  |
| 16 |  | Build Tasks | 5d | 2025-03-12 | 2025-03-19 | 15 |  |
| 17 |  | SYSTEMS REQUIREMENTS DOCUMENT ESTIMATE | 0d | 2025-03-06 | 2025-03-06 |  | start no earlier than 2025-03-06 |
| 18 |  | USER INTERFACE MOCKUPS ESTIMATE | 0d | 2025-03-13 | 2025-03-13 |  | start no earlier than 2025-03-13 |
| 19 | 5 | **Iteration 2: Develop Primary Timeline Graphic** | 15d | 2025-03-19 | 2025-04-09 | 12 |  |
| 20 |  | Planning Tasks | 1d | 2025-03-19 | 2025-03-20 |  |  |
| 21 |  | Analysis Tasks | 5d | 2025-03-19 | 2025-03-26 |  |  |
| 22 |  | Design Tasks | 5d | 2025-03-26 | 2025-04-02 | 21 |  |
| 23 |  | Build Tasks | 5d | 2025-04-02 | 2025-04-09 | 22 |  |
| 24 |  | UPDATED SYSTEM REQUIREMENTS DOC ESTIMATE | 0d | 2025-04-03 | 2025-04-03 |  | start no earlier than 2025-04-03 |
| 25 | 6 | **Iteration 3: Develop Parallele Timeline Graphic** | 15d | 2025-04-09 | 2025-04-30 | 19 |  |
| 26 |  | Planning Tasks | 1d | 2025-04-09 | 2025-04-10 |  |  |
| 27 |  | Analysis Tasks | 5d | 2025-04-09 | 2025-04-16 |  |  |
| 28 |  | Design Tasks | 5d | 2025-04-16 | 2025-04-23 | 27 |  |
| 29 |  | Build Tasks | 5d | 2025-04-23 | 2025-04-30 | 28 |  |
| 30 | 7 | **Clean Up & Final Test** | 6d | 2025-04-30 | 2025-05-08 | 25 |  |
| 31 |  | Clean up code and documentation | 2d | 2025-04-30 | 2025-05-02 |  |  |
| 32 |  | Final Test | 4d | 2025-05-02 | 2025-05-08 | 31 |  |
| 33 |  | DELIVER FINAL PROJECT CODE | 0d | 2025-05-08 | 2025-05-08 | 32 |  |

## Version 2 (saved 2025-02-17)

Note of the change: Update TimelineXpress_Overall_Schedule.pod

Last finish stays 2025-05-08.

Added:

| ID | Task | Duration | Start | Finish | Predecessors | Constraint | Resources |
| --- | --- | --- | --- | --- | --- | --- | --- |
| 8 | Review Project Plan and Schedule | 0d | 2025-02-18 | 2025-02-18 | 5, 6, 7 | start no earlier than 2025-02-17 |  |
| 30 | Monitor Project Scedule | 2d | 2025-04-04 | 2025-04-08 | 19 |  | Walter Ulicki [25%] |
| 31 | Write Database Code - first cut | 5d | 2025-04-04 | 2025-04-11 | 19 |  | Dana Tryon |
| 32 | Write Graphics Code - first cut | 5d | 2025-04-04 | 2025-04-11 | 19 |  | Alexandra Lawler |
| 34 | ITERATION #1 CODE DONE | 0d | 2025-04-16 | 2025-04-16 | 33 |  |  |
| 35 | **Iteration 2: Create Second Cut** | 8d | 2025-04-16 | 2025-04-28 | 29 |  |  |
| 36 | Monitor Project Schedule | 8d | 2025-04-16 | 2025-04-28 | 29 |  | Walter Ulicki [25%] |
| 37 | Update Database Code - Second Cut | 4d | 2025-04-16 | 2025-04-22 | 29 |  | Dana Tryon |
| 38 | Update Graphics Code - Second Cut | 4d | 2025-04-16 | 2025-04-22 | 29 |  | Alexandra Lawler |
| 39 | Test Iteration 2 Code | 5d | 2025-04-18 | 2025-04-25 | 37FS-2d, 38FS-2d |  | Gitti Esmailzada |
| 40 | ITERATION #2 CODE DONE | 0d | 2025-04-25 | 2025-04-25 | 39 |  |  |
| 44 | DELIVER FINAL PROJECT DOCUMENT | 0d | 2025-05-08 | 2025-05-08 | 42, 43 | start no earlier than 2025-05-08 |  |

Removed: 10 Analyze Database needs

Changed:

| ID | Task | Start | Finish | Duration | Predecessors | Other |
| --- | --- | --- | --- | --- | --- | --- |
| 1 | **Phase 0: Identify Problem, Obtain Approval** |  |  |  |  | was named Phase 1: Identify Problem, Obtain Approval |
| 2 | Creat Project Proposal Slides |  | 2025-02-06 → 2025-02-05 (-1d) | 5d → 4d |  | resources none → Walter Ulicki [25%]; Gitti Esmailzada [25%]; Dana Tryon [25%]; Alexandra Lawler [25%]; baseline finish 2025-02-06 → 2025-02-05 |
| 3 | PROJECT PROPOSAL DUE |  |  |  |  | constraint none → start no earlier than 2025-02-06 |
| 4 | **Phase 1: Project Planning** |  |  |  |  | was named Phase 2: Plan and Monitor |
| 5 | Write Project Plan document |  |  |  | none → 1 | resources none → Walter Ulicki [25%]; Gitti Esmailzada [25%]; Dana Tryon [25%]; Alexandra Lawler [25%] |
| 6 | Create System Context Diag |  |  |  |  | resources none → Gitti Esmailzada [10%]; Dana Tryon [10%]; Alexandra Lawler [10%] |
| 7 | Create Main Schedule |  |  |  |  | resources none → Walter Ulicki |
| 9 | Update Project Plan | 2025-02-20 → 2025-02-18 (-2d) | 2025-02-26 → 2025-02-19 (-7d) | 4d → 1d | 4 → 8 | was named Phase 3: Analysis & Discovery; resources none → Walter Ulicki; baseline start 2025-02-20 → 2025-02-18; baseline finish 2025-02-26 → 2025-02-19 |
| 10 | PROJECT PLAN DOCUMENT DUE |  |  |  | 5 → 9 |  |
| 11 | **Phase 2: Systems Analysis** |  | 2025-02-26 → 2025-03-14 (+16d) | 4d → 16d | Analyze Database needsSS → 4 | was named Analyze Graphics needs; baseline finish 2025-02-26 → 2025-03-14 |
| 12 | Market Research Other Timeline Applications | 2025-02-26 → 2025-02-20 (-6d) | 2025-03-19 → 2025-03-06 (-13d) | 15d → 10d | 9 → 4 | was named Iteration 1: Develop Database; resources none → Walter Ulicki [50%]; Gitti Esmailzada [50%]; Dana Tryon [50%]; Alexandra Lawler [50%]; baseline start 2025-02-26 → 2025-02-20; baseline finish 2025-03-19 → 2025-03-06 |
| 13 | Define required information and data elements |  | 2025-02-27 → 2025-02-28 (+1d) | 1d → 2d | none → 12SS+4d | was named Planning Tasks; resources none → Dana Tryon; Gitti Esmailzada; baseline finish 2025-02-27 → 2025-02-28 |
| 14 | Model User Interactions with the Application |  | 2025-03-05 → 2025-02-28 (-5d) | 5d → 2d | none → 12SS+4d | was named Analysis Tasks; resources none → Walter Ulicki; Alexandra Lawler; baseline finish 2025-03-05 → 2025-02-28 |
| 15 | Create Systems Requirements Document | 2025-03-05 → 2025-02-28 (-5d) | 2025-03-12 → 2025-03-06 (-6d) | 5d → 4d | 14 → 13, 14 | was named Design Tasks; resources none → Walter Ulicki; Gitti Esmailzada [25%]; Dana Tryon [25%]; Alexandra Lawler [25%]; baseline start 2025-03-05 → 2025-02-28; baseline finish 2025-03-12 → 2025-03-06 |
| 16 | Review Systems Requirements Document | 2025-03-12 → 2025-03-10 (-2d) | 2025-03-19 → 2025-03-10 (-9d) | 5d → 0d |  | was named Build Tasks; constraint none → start no earlier than 2025-03-10; baseline start 2025-03-12 → 2025-03-10; baseline finish 2025-03-19 → 2025-03-10 |
| 17 | Update Systems Requirements Documents | 2025-03-06 → 2025-03-10 (+4d) | 2025-03-06 → 2025-03-11 (+5d) | 0d → 1d | none → 16 | was named SYSTEMS REQUIREMENTS DOCUMENT ESTIMATE; constraint start no earlier than 2025-03-06 → none; resources none → Walter Ulicki; baseline start 2025-03-13 → 2025-03-10; baseline finish 2025-03-13 → 2025-03-11 |
| 18 | SYSTEMS REQUIREMENTS DOCUMENTS DUE | 2025-03-13 → 2025-03-14 (+1d) | 2025-03-13 → 2025-03-14 (+1d) |  | none → 17 | was named USER INTERFACE MOCKUPS ESTIMATE; constraint start no earlier than 2025-03-13 → start no earlier than 2025-03-14; baseline start 2025-03-13 → 2025-03-14; baseline finish 2025-03-13 → 2025-03-14 |
| 19 | **Phase 3: System Design** | 2025-03-19 → 2025-03-14 (-5d) | 2025-04-09 → 2025-04-04 (-5d) |  | 12 → 11 | was named Iteration 2: Develop Primary Timeline Graphic; baseline start 2025-03-19 → 2025-03-14; baseline finish 2025-04-09 → 2025-04-04 |
| 20 | Monitor Project Schedule | 2025-03-19 → 2025-03-14 (-5d) | 2025-03-20 → 2025-03-18 (-2d) | 1d → 2d | none → 11 | was named Planning Tasks; resources none → Walter Ulicki [25%]; baseline start 2025-03-19 → 2025-03-14; baseline finish 2025-03-20 → 2025-03-18 |
| 21 | Define Database Schema | 2025-03-19 → 2025-03-14 (-5d) |  | 5d → 8d | none → 11 | was named Analysis Tasks; resources none → Dana Tryon; baseline start 2025-03-19 → 2025-03-14 |
| 22 | Design Screen Layouts | 2025-03-26 → 2025-03-14 (-12d) | 2025-04-02 → 2025-03-26 (-7d) | 5d → 8d | 21 → 11 | was named Design Tasks; resources none → Alexandra Lawler; baseline start 2025-03-26 → 2025-03-14; baseline finish 2025-04-02 → 2025-03-26 |
| 23 | Identify Program Classes and Methods | 2025-04-02 → 2025-03-14 (-19d) | 2025-04-09 → 2025-03-26 (-14d) | 5d → 8d | 22 → 11 | was named Build Tasks; resources none → Gitti Esmailzada; baseline start 2025-04-02 → 2025-03-14; baseline finish 2025-04-09 → 2025-03-26 |
| 24 | Create System Design Document | 2025-04-03 → 2025-03-24 (-10d) |  | 0d → 8d | none → 21FS-2d, 22FS-2d, 23FS-2d | was named UPDATED SYSTEM REQUIREMENTS DOC ESTIMATE; constraint start no earlier than 2025-04-03 → none; resources none → Walter Ulicki; baseline start none → 2025-03-24; baseline finish none → 2025-04-03 |
| 25 | Review system Design Document | 2025-04-09 → 2025-04-03 (-6d) | 2025-04-30 → 2025-04-03 (-27d) | 15d → 0d | 19 → 24 | was named Iteration 3: Develop Parallele Timeline Graphic; constraint none → start no earlier than 2025-03-06; baseline start 2025-04-09 → 2025-04-03; baseline finish 2025-04-30 → 2025-04-03 |
| 26 | Update System Design Document | 2025-04-09 → 2025-04-03 (-6d) | 2025-04-10 → 2025-04-04 (-6d) |  | none → 25 | was named Planning Tasks; resources none → Walter Ulicki; baseline start 2025-04-09 → 2025-04-03; baseline finish 2025-04-10 → 2025-04-04 |
| 27 | SYTEM DESIGN DOCUMENT DUE | 2025-04-09 → 2025-04-04 (-5d) | 2025-04-16 → 2025-04-04 (-12d) | 5d → 0d | none → 26 | was named Analysis Tasks; constraint none → start no earlier than 2025-03-13; baseline start 2025-04-09 → 2025-04-04; baseline finish 2025-04-16 → 2025-04-04 |
| 28 | **Phase 4: Build Phase** | 2025-04-16 → 2025-04-04 (-12d) | 2025-04-23 → 2025-04-28 (+5d) | 5d → 16d | 27 → none | was named Design Tasks; baseline start 2025-04-16 → 2025-04-04; baseline finish 2025-04-23 → 2025-04-28 |
| 29 | **Iteration 1: Create First Cut Code** | 2025-04-23 → 2025-04-04 (-19d) | 2025-04-30 → 2025-04-16 (-14d) | 5d → 8d | 28 → 19 | was named Build Tasks; baseline start 2025-04-23 → 2025-04-04; baseline finish 2025-04-30 → 2025-04-16 |
| 33 | Test Iteration 1 Code | 2025-05-08 → 2025-04-09 (-29d) | 2025-05-08 → 2025-04-16 (-22d) | 0d → 5d | 43 → 31FS-2d, 32FS-2d | was named DELIVER FINAL PROJECT CODE; constraint none → start no earlier than 2025-04-03; resources none → Gitti Esmailzada; baseline start 2025-05-08 → 2025-04-09; baseline finish 2025-05-08 → 2025-04-16 |
| 41 | **Clean Up & Final Test** | 2025-04-30 → 2025-04-28 (-2d) |  | 6d → 8d | 25 → 35 | baseline start 2025-04-30 → 2025-04-28 |
| 42 | Clean up code and documentation | 2025-04-30 → 2025-04-28 (-2d) | 2025-05-02 → 2025-04-30 (-2d) |  | none → 35 | resources none → Walter Ulicki [50%]; Dana Tryon [50%]; Alexandra Lawler [50%]; baseline start 2025-04-30 → 2025-04-28; baseline finish 2025-05-02 → 2025-04-30 |
| 43 | Final Test | 2025-05-02 → 2025-04-28 (-4d) | 2025-05-08 → 2025-05-02 (-6d) |  | 42 → 35 | resources none → Gitti Esmailzada; baseline start 2025-05-02 → 2025-04-28; baseline finish 2025-05-08 → 2025-05-02 |

## Version 3 (saved 2025-02-17)

Note of the change: Changes from Review held 2/17/2025

Last finish stays 2025-05-08.

Changed:

| ID | Task | Other |
| --- | --- | --- |
| 27 | SYSTEM DESIGN DOCUMENT DUE | was named SYTEM DESIGN DOCUMENT DUE |

## Version 4 (saved 2025-04-21)

Note of the change: Update TimelineXpress_Overall_Schedule.pod

Last finish stays 2025-05-08.

Removed: 31 Write Database Code - first cut; 32 Write Graphics Code - first cut; 33 Test Iteration 1 Code; 34 ITERATION #1 CODE DONE; 35 Iteration 2: Create Second Cut; 36 Monitor Project Schedule; 37 Update Database Code - Second Cut; 38 Update Graphics Code - Second Cut; 39 Test Iteration 2 Code; 40 ITERATION #2 CODE DONE; 41 Clean Up & Final Test; 42 Clean up code and documentation; 43 Final Test

Changed:

| ID | Task | Start | Finish | Duration | Predecessors | Other |
| --- | --- | --- | --- | --- | --- | --- |
| 7 | Create Main Schedule |  |  | 4d → 4.38d |  |  |
| 14 | Model User Interactions with the Application | 2025-02-26 → 2025-02-27 (+1d) | 2025-02-28 → 2025-03-04 (+4d) | 2d → 4d |  | constraint none → start no earlier than 2025-02-27 |
| 15 | Create Systems Requirements Document | 2025-02-28 → 2025-03-05 (+5d) | 2025-03-06 → 2025-03-10 (+4d) |  |  |  |
| 17 | Update Systems Requirements Documents | 2025-03-10 → 2025-03-11 (+1d) |  |  |  |  |
| 28 | **Final Presentation** |  | 2025-04-28 → 2025-05-08 (+10d) | 16d → 24d |  | was named Phase 4: Build Phase; baseline start 2025-04-04 → 2025-04-28; baseline finish 2025-04-28 → 2025-05-08 |
| 29 | Clean up documentation |  | 2025-04-16 → 2025-04-08 (-8d) | 8d → 2d | 19 → 27 | was named Iteration 1: Create First Cut Code; resources none → Walter Ulicki [50%]; Dana Tryon [50%]; Alexandra Lawler [50%]; baseline start 2025-04-04 → 2025-04-28; baseline finish 2025-04-16 → 2025-04-30 |
| 30 | Final Presentation | 2025-04-04 → 2025-04-08 (+4d) | 2025-04-08 → 2025-04-14 (+6d) | 2d → 4d | 19 → 29 | was named Monitor Project Scedule; resources Walter Ulicki [25%] → Gitti Esmailzada; baseline start 2025-04-04 → 2025-04-28; baseline finish 2025-04-08 → 2025-05-02 |
| 31 | DELIVER FINAL PROJECT DOCUMENT |  |  |  | Clean up code and documentation, Final Test → 29, 30 |  |

## Version 5 (saved 2025-04-30)

Note of the change: Release version 1.0 of System Design Document

Last finish stays 2025-05-08.

Changed:

| ID | Task | Start | Finish | Duration | Other |
| --- | --- | --- | --- | --- | --- |
| 11 | **Phase 2: Systems Analysis** |  | 2025-03-14 → 2025-03-26 (+12d) | 16d → 24.38d |  |
| 14 | Model User Interactions with the Application |  | 2025-03-04 → 2025-03-05 (+1d) | 4d → 5d |  |
| 15 | Create Systems Requirements Document | 2025-03-05 → 2025-03-06 (+1d) | 2025-03-10 → 2025-03-11 (+1d) |  |  |
| 16 | Review Systems Requirements Document | 2025-03-10 → 2025-03-11 (+1d) | 2025-03-10 → 2025-03-18 (+8d) | 0d → 5d |  |
| 17 | Update Systems Requirements Documents | 2025-03-11 → 2025-03-19 (+8d) | 2025-03-11 → 2025-03-25 (+14d) | 1d → 5d |  |
| 18 | SYSTEMS REQUIREMENTS DOCUMENTS DUE | 2025-03-14 → 2025-03-25 (+11d) | 2025-03-14 → 2025-03-26 (+12d) | 0d → 1d |  |
| 19 | **Phase 3: System Design** | 2025-03-14 → 2025-03-27 (+13d) | 2025-04-04 → 2025-04-30 (+26d) | 15d → 25d |  |
| 20 | Monitor Project Schedule | 2025-03-14 → 2025-03-27 (+13d) | 2025-03-18 → 2025-04-24 (+37d) | 2d → 21d |  |
| 21 | Define Database Schema | 2025-03-14 → 2025-03-27 (+13d) | 2025-03-26 → 2025-04-18 (+23d) | 8d → 17d |  |
| 22 | Design Screen Layouts | 2025-03-14 → 2025-03-27 (+13d) | 2025-03-26 → 2025-04-18 (+23d) | 8d → 17d |  |
| 23 | Identify Program Classes and Methods | 2025-03-14 → 2025-03-27 (+13d) | 2025-03-26 → 2025-04-18 (+23d) | 8d → 17d |  |
| 24 | Create System Design Document | 2025-03-24 → 2025-04-17 (+24d) | 2025-04-03 → 2025-04-28 (+25d) |  |  |
| 25 | Review system Design Document | 2025-04-03 → 2025-04-28 (+25d) | 2025-04-03 → 2025-04-28 (+25d) |  |  |
| 26 | Update System Design Document | 2025-04-03 → 2025-04-29 (+26d) | 2025-04-04 → 2025-04-29 (+25d) |  | constraint none → start no earlier than 2025-04-28 |
| 27 | SYSTEM DESIGN DOCUMENT DUE | 2025-04-04 → 2025-04-30 (+26d) | 2025-04-04 → 2025-04-30 (+26d) |  | constraint start no earlier than 2025-03-13 → start no earlier than 2025-04-30 |
| 28 | **Final Presentation** | 2025-04-04 → 2025-05-01 (+27d) |  | 24d → 5.62d |  |
| 29 | Create Viewgraph presentation | 2025-04-04 → 2025-05-01 (+27d) | 2025-04-08 → 2025-05-06 (+28d) | 2d → 4d | was named Clean up documentation |
| 30 | Review and Update Final Presentation | 2025-04-08 → 2025-05-07 (+29d) | 2025-04-14 → 2025-05-07 (+23d) | 4d → 1d | was named Final Presentation; resources Gitti Esmailzada → Gitti Esmailzada; Walter Ulicki; Dana Tryon; Alexandra Lawler |
